# CCES-甘特图2

Schedule from MS Project, 2005-01-12 to 2005-01-26.
huadi

## Calendars

- 标准: Mon-Fri 08:00-12:00, 13:00-17:00; Sat-Sun off. Exceptions (off unless hours are given): 2005-01-15 08:00-12:00, 13:00-17:00, 2005-01-22 to 2005-01-23 08:00-12:00, 13:00-17:00.

## Resources

| Resource |
| --- |
| 莫凌琳 |
| 黄万玉 |
| 黄万玉 潘根军 |
| 黄万玉 张子轶 潘根军 |
| 黄万玉 张子轶 潘根军 向忠陶 |
| 黄万玉 张子轶 潘根军 向忠陶 吴小兵 |
| 黄万玉 张子轶 潘根军 向忠陶 吴小兵 梁杰 |
| 黄万玉 张子轶 潘根军 向忠陶 吴小兵 梁杰 唐军 |
| 向忠陶 吴小兵 梁杰 唐军 |
| 向忠陶 |
| 冯增亮 |
| 黄万玉 向忠陶 |
| 余波 |
| 支丽欧 |
| 余波 颜石强 |
| 余波 颜石强 彭小波 |
| 莫凌琳 黄万玉 向忠陶 |
| 全体成员 |
| 彭小波 |
| 颜石强 |
| 莫凌琳 向忠陶 黄万玉 |
| 莫凌琳 余波 |
| 莫凌琳 支丽欧 冯增亮 |

## Schedule

| ID | WBS | Task | Type | Duration | Start | Finish | Predecessors | Total slack | Free slack | Constraint | Resources | Work |
| --- | --- | --- | --- | --- | --- | --- | --- | --- | --- | --- | --- | --- |
| 1 | 1 | **立项** |  | 1d | 2005-01-12 08:00 | 2005-01-12 17:00 |  | 3.7d | 0d |  | 莫凌琳 | 16h |
| 2 | 1.1 | 编写《项目审批表》 |  | 1d | 2005-01-12 08:00 | 2005-01-12 17:00 |  | 3.7d |  |  | 莫凌琳 | 8h |
| 3 | 2 | **计划** |  | 2d | 2005-01-13 08:00 | 2005-01-14 17:00 | 1 | 0.9d | 0d |  | 莫凌琳 | 56h |
| 4 | 2.1 | 编写《项目计划书》 |  | 1d | 2005-01-13 08:00 | 2005-01-13 17:00 |  | 0.9d | 0d | start no earlier than 2005-01-13 08:00 | 莫凌琳 | 8h |
| 5 | 2.2 | 编写《测试计划》 |  | 1d | 2005-01-14 08:00 | 2005-01-14 17:00 | 4 | 0.9d |  |  | 余波 | 8h |
| 6 | 2.3 | 编写《配置计划》 |  | 1d | 2005-01-14 08:00 | 2005-01-14 17:00 | 4 | 0.9d |  |  | 冯增亮 | 8h |
| 7 | 2.4 | 编写《评审计划》 |  | 1d | 2005-01-14 08:00 | 2005-01-14 17:00 | 4 | 0.9d |  |  | 支丽欧 | 8h |
| 8 | 2.5 | 编写《QA计划》 |  | 1d | 2005-01-14 08:00 | 2005-01-14 17:00 | 4 | 0.9d |  |  | 支丽欧 | 8h |
| 9 | 3 | **需求分析** |  | 1.8d | 2005-01-15 08:00 | 2005-01-17 15:24 | 3 | 2.7d | 0d |  | 黄万玉 张子轶 潘根军 向忠陶 吴小兵 梁杰 唐军 | 30.4h |
| 10 | 3.1 | 制定需求管理计划 |  | 0.3d | 2005-01-15 08:00 | 2005-01-15 10:24 | 3 | 0.9d | 0d | start no earlier than 2005-01-14 08:00 | 黄万玉 | 2.4h |
| 11 | 3.2 | 提取功能业务需求 |  | 0.2d | 2005-01-15 10:24 | 2005-01-15 12:00 | 10 | 0.9d | 0d | start no earlier than 2005-01-14 08:00 | 黄万玉 张子轶 潘根军 | 1.6h |
| 12 | 3.3 | 提取数据业务需求 |  | 0.2d | 2005-01-15 13:00 | 2005-01-15 14:36 | 11 | 0.9d | 0d | start no earlier than 2005-01-14 08:00 | 向忠陶 吴小兵 梁杰 唐军 | 1.6h |
| 13 | 3.4 | 功能需求开发 |  | 0.2d | 2005-01-15 14:36 | 2005-01-15 16:12 | 12 | 1.8d | 0d | start no earlier than 2005-01-14 08:00 | 黄万玉 张子轶 潘根军 | 1.6h |
| 14 | 3.5 | 数据需求开发 |  | 0.2d | 2005-01-15 14:36 | 2005-01-15 16:12 | 12 | 0.9d | 0d | start no earlier than 2005-01-14 08:00 | 向忠陶 吴小兵 梁杰 唐军 | 1.6h |
| 15 | 3.6 | 功能需求批准 | milestone | 0d | 2005-01-15 16:12 | 2005-01-15 16:12 | 13 | 1.8d |  | start no earlier than 2005-01-14 08:00 | 莫凌琳 |  |
| 16 | 3.7 | 数据需求批准 | milestone | 0d | 2005-01-15 16:12 | 2005-01-15 16:12 | 14 | 0.9d | 0d | start no earlier than 2005-01-14 08:00 | 莫凌琳 |  |
| 17 | 3.8 | 建立概念数据模型 |  | 0.3d | 2005-01-15 16:12 | 2005-01-17 09:36 | 16 | 0.9d | 0d |  | 向忠陶 吴小兵 梁杰 唐军 | 2.4h |
| 18 | 3.9 | 建立物理数据模型 | milestone | 0d | 2005-01-17 09:36 | 2005-01-17 09:36 | 17 | 0.9d | 0d |  | 向忠陶 吴小兵 梁杰 唐军 |  |
| 19 | 3.10 | 建立数据库 | milestone | 0d | 2005-01-17 09:36 | 2005-01-17 09:36 | 18 | 0.9d | 0d |  | 向忠陶 吴小兵 梁杰 唐军 |  |
| 20 | 3.11 | 编写《数据库设计说明书》 |  | 0.3d | 2005-01-17 09:36 | 2005-01-17 12:00 | 19 | 0.9d | 0d |  | 向忠陶 | 2.4h |
| 21 | 3.12 | 编写《需求规格说明书》 |  | 0.3d | 2005-01-17 13:00 | 2005-01-17 15:24 | 20 | 0.9d | 0d |  | 黄万玉 | 2.4h |
| 22 | 3.13 | 基线化需求 | milestone | 0d | 2005-01-17 15:24 | 2005-01-17 15:24 | 21 | 2.7d | 0d | finish no earlier than 2005-01-15 17:00 | 冯增亮 |  |
| 23 | 3.14 | 需求变更控制 | milestone | 0d | 2005-01-15 17:00 | 2005-01-15 17:00 |  | 3.5d |  | finish no earlier than 2005-01-15 17:00 | 冯增亮 |  |
| 24 | 3.15 | 需求状态审批 | milestone | 0d | 2005-01-15 17:00 | 2005-01-15 17:00 |  | 3.5d |  | finish no earlier than 2005-01-15 17:00 | 莫凌琳 |  |

| ID | WBS | Task | Type | Duration | Start | Finish | Predecessors | Total slack | Free slack | Constraint | Resources | Work |
| --- | --- | --- | --- | --- | --- | --- | --- | --- | --- | --- | --- | --- |
| 25 | 4 | **概要设计** |  | 1.3d | 2005-01-17 15:24 | 2005-01-19 08:48 | 9 | 2.7d | 0.9d |  | 黄万玉 张子轶 潘根军 向忠陶 吴小兵 梁杰 唐军 | 20.8h |
| 26 | 4.1 | 软件架构设计 |  | 0.3d | 2005-01-17 15:24 | 2005-01-18 08:48 | 22 | 2.7d | 0d | start no earlier than 2005-01-16 08:00 | 黄万玉 向忠陶 | 2.4h |
| 27 | 4.2 | 软件架构设计评审 | milestone | 0d | 2005-01-18 08:48 | 2005-01-18 08:48 | 26 | 2.7d | 0d | start no earlier than 2005-01-17 08:00 | 莫凌琳 |  |
| 28 | 4.3 | 基线化架构 | milestone | 0d | 2005-01-18 08:48 | 2005-01-18 08:48 | 27 | 2.7d | 0d | start no earlier than 2005-01-17 08:00 | 黄万玉 向忠陶 |  |
| 29 | 4.4 | 软件概要设计 |  | 0.7d | 2005-01-18 08:48 | 2005-01-18 15:24 | 28 | 2.7d | 0d | start no earlier than 2005-01-18 08:00 | 黄万玉 张子轶 潘根军 向忠陶 吴小兵 梁杰 唐军 | 5.6h |
| 30 | 4.5 | 软件概要设计评审 | milestone | 0d | 2005-01-18 15:24 | 2005-01-18 15:24 | 29 | 2.7d | 0d | start no earlier than 2005-01-18 08:00 | 莫凌琳 |  |
| 31 | 4.6 | 编写《概要设计说明书》 |  | 0.3d | 2005-01-18 15:24 | 2005-01-19 08:48 | 30 | 2.7d | 0d | start no earlier than 2005-01-18 08:00 | 黄万玉 | 2.4h |
| 32 | 4.7 | 基线化概要设计 | milestone | 0d | 2005-01-19 08:48 | 2005-01-19 08:48 | 31 | 2.7d |  | start no earlier than 2005-01-18 08:00 | 黄万玉 |  |
| 33 | 5 | **实施** |  | 5d | 2005-01-20 08:00 | 2005-01-24 17:00 | 25 | 1.8d |  |  | 全体成员 | 157.6h |
| 34 | 5.1 | 制定集成计划 |  | 0.3d | 2005-01-20 08:00 | 2005-01-20 10:24 | 31 | 6.5d | 0d | start no earlier than 2005-01-20 08:00 | 黄万玉 | 2.4h |
| 35 | 5.2 | 评审集成计划 | milestone | 0d | 2005-01-20 10:24 | 2005-01-20 10:24 | 34 | 6.5d |  | start no earlier than 2005-01-20 08:00 | 莫凌琳 |  |
| 36 | 5.3 | 单元编码及缺陷修复 |  | 4d | 2005-01-21 08:00 | 2005-01-24 17:00 | 31 | 1.8d |  | finish no earlier than 2005-01-24 17:00 | 全体成员 | 32h |
| 37 | 5.4 | 编写《编码卷宗》 |  | 4d | 2005-01-21 08:00 | 2005-01-24 17:00 | 31 | 1.8d |  | finish no earlier than 2005-01-24 17:00 | 全体成员 | 32h |
| 38 | 5.5 | 代码评审 |  | 0.5d | 2005-01-24 08:00 | 2005-01-24 12:00 | 31 | 2.3d |  | start no earlier than 2005-01-24 08:00 | 全体成员 | 4h |
| 39 | 5.6 | 执行单元测试 |  | 5d | 2005-01-20 08:00 | 2005-01-24 17:00 |  | 1.8d |  | finish no earlier than 2005-01-24 17:00 | 全体成员 | 40h |
| 40 | 5.7 | 集成程序单元 |  | 0.3d | 2005-01-24 08:00 | 2005-01-24 10:24 |  | 0.8d | 0d | start no earlier than 2005-01-24 08:00 | 莫凌琳 向忠陶 黄万玉 | 2.4h |
| 41 | 5.8 | 执行集成测试 |  | 0.3d | 2005-01-24 10:24 | 2005-01-24 13:48 | 40 | 0.8d | 0.4d | start no earlier than 2005-01-24 08:00 | 彭小波; 颜石强 | 4.8h |
| 42 | 6 | **系统测试** |  | 1d | 2005-01-25 08:00 | 2005-01-25 17:00 |  | 0d |  |  | 余波 | 12.8h |
| 43 | 6.1 | 执行系统测试 |  | 0.3d | 2005-01-25 08:00 | 2005-01-25 10:24 | 41 | 0.4d |  | start no earlier than 2005-01-25 08:00 | 余波 颜石强 彭小波 | 2.4h |
| 44 | 6.2 | 编写《系统测试报告》 |  | 0.3d | 2005-01-25 14:36 | 2005-01-25 17:00 | 43 | 0d |  | finish no earlier than 2005-01-25 17:00 | 余波 颜石强 彭小波 | 2.4h |
| 45 | 7 | **部署** |  | 0.3d | 2005-01-26 08:00 | 2005-01-26 10:24 |  | 0d |  |  | 莫凌琳 支丽欧 冯增亮 | 4.8h |
| 46 | 7.1 | 编写《用户手册》 |  | 0.1d | 2005-01-26 08:00 | 2005-01-26 08:48 | 44 | 0d |  | start no earlier than 2005-01-25 08:00 | 向忠陶 | 0.8h |
| 47 | 7.2 | 编写《项目产成品清单》 |  | 0.1d | 2005-01-26 08:48 | 2005-01-26 09:36 | 46 | 0d |  | start no earlier than 2005-01-25 08:00 | 黄万玉 | 0.8h |
| 48 | 7.3 | 编写《项目开发总结报告》 |  | 0.1d | 2005-01-26 09:36 | 2005-01-26 10:24 | 47 | 0d |  | start no earlier than 2005-01-25 08:00 | 莫凌琳 | 0.8h |

| ID | WBS | Task | Duration | Start | Finish | Predecessors | Total slack | Constraint | Resources | Work |
| --- | --- | --- | --- | --- | --- | --- | --- | --- | --- | --- |
| 49 | 8 | **结项** | 0.5d | 2005-01-26 10:24 | 2005-01-26 15:24 | 45 | 0d |  | 莫凌琳 黄万玉 向忠陶 | 8h |
| 50 | 8.1 | 验收测试 | 0.5d | 2005-01-26 10:24 | 2005-01-26 15:24 |  | 0d | start no earlier than 2005-01-26 08:00 | 莫凌琳 余波 | 4h |
