# working sheet20010828

Schedule from MS Project, 2001-10-26 to 2001-11-03.

## Calendars

- 标准: Mon-Fri 08:00-12:00, 13:00-17:00; Sat-Sun off. Exceptions (off unless hours are given): 2001-10-27 08:00-12:00, 13:00-17:00, 2001-11-03 08:00-12:00, 13:00-17:00.

## Resources

| Resource |
| --- |
| 蒋建军 |
| 陈坚 |
| 江旻 |
| 李锐 |
| 胡建军 |
| 黄煜 |
| 汪道明 |
| 林旭东 |
| 汪林涛 |
| 姜磊 |
| 徐智 |
| 伍虹屹 |
| 罗斌 |
| 张际海 |
| 陈建 |
| 钱灿 |
| 方银 |
| 罗彬 |
| 肖军 |
| 赵宜 |
| 武虹艺 |

## Schedule

| ID | WBS | Task | Duration | Start | Finish | Total slack | Constraint | Resources | Work |
| --- | --- | --- | --- | --- | --- | --- | --- | --- | --- |
| 1 | 1 | Requirements | 5d | 2001-10-29 | 2001-11-02 | 1d | start no earlier than 2001-10-29 |  |  |
| 2 | 2 | Requirement Management | 5d | 2001-10-29 | 2001-11-02 | 1d | start no earlier than 2001-10-29 | 汪道明 | 40h |
| 4 | 3 | Refine Architecture | 1d | 2001-10-26 | 2001-10-26 | 7d | start no earlier than 2001-10-26 |  |  |
| 5 | 4 | Review the Architecture | 1d | 2001-10-26 | 2001-10-26 | 7d | start no earlier than 2001-10-26 | 李锐; 黄煜; 胡建军; 姜磊; 陈建; 罗斌; 钱灿; 伍虹屹; 肖军; 汪道明; 蒋建军; 陈坚; 江旻 | 104h |
| 7 | 5 | Implementation | 5d | 2001-10-29 | 2001-11-02 | 1d | start no earlier than 2001-10-29 |  |  |
| 8 | 6 | Implement Class | 5d | 2001-10-29 | 2001-11-02 | 1d | start no earlier than 2001-10-29 |  |  |
| 9 | 7 | Implement UI | 2d | 2001-10-29 | 2001-10-30 | 4d | start no earlier than 2001-10-29 | 钱灿; 武虹艺; 赵宜 | 48h |
| 10 | 8 | Fix a Defect | 1d | 2001-10-31 | 2001-10-31 | 3d | start no earlier than 2001-10-31 | 钱灿; 武虹艺; 赵宜 | 24h |
| 11 | 9 | Review UI Code | 1d | 2001-10-31 | 2001-10-31 | 3d | start no earlier than 2001-10-31 | 李锐; 胡建军; 黄煜; 姜磊; 陈建; 罗斌; 钱灿; 伍虹屹; 肖军; 汪道明; 蒋建军; 陈坚; 江旻 | 104h |
| 12 | 10 | Implement Class | 3d | 2001-10-29 | 2001-10-31 | 3d | start no earlier than 2001-10-29 | 胡建军; 黄煜; 姜磊; 陈建; 罗斌; 钱灿; 伍虹屹; 肖军; 汪道明 | 216h |
| 13 | 11 | Fix a Defect | 1d | 2001-11-01 | 2001-11-01 | 2d | start no earlier than 2001-11-01 | 胡建军; 黄煜; 姜磊; 陈建; 罗斌; 钱灿; 伍虹屹; 肖军; 汪道明 | 72h |
| 14 | 12 | Perform Unit Tests | 3d | 2001-11-01 | 2001-11-03 | 0d | start no earlier than 2001-11-01 | 胡建军; 姜磊; 陈建; 黄煜 | 96h |
| 15 | 13 | Review Code | 1d | 2001-11-03 | 2001-11-03 | 0d | start no earlier than 2001-11-03 | 姜磊; 陈建; 胡建军 | 24h |
| 16 | 14 | Coding "Help" | 5d | 2001-10-29 | 2001-11-02 | 1d | start no earlier than 2001-10-29 | 方银; 伍虹屹 | 80h |
| 17 | 15 | Integrate Each Subsystem | 1d | 2001-11-02 | 2001-11-02 | 1d | start no earlier than 2001-11-02 |  |  |
| 18 | 16 | Integrate Subsystem | 1d | 2001-11-02 | 2001-11-02 | 1d | start no earlier than 2001-11-02 | 胡建军 | 8h |
| 20 | 17 | Test | 5d | 2001-10-29 | 2001-11-02 | 1d | start no earlier than 2001-10-29 |  |  |
| 21 | 18 | System Test Case Update | 5d | 2001-10-29 | 2001-11-02 | 1d | start no earlier than 2001-10-29 |  |  |
| 22 | 19 | Test Case Update | 5d | 2001-10-29 | 2001-11-02 | 1d | start no earlier than 2001-10-29 | 蒋建军; 陈坚; 江旻 | 120h |
| 24 | 20 | Design Test | 5d | 2001-10-29 | 2001-11-02 | 1d | start no earlier than 2001-10-29 |  |  |
| 25 | 21 | Design Test | 5d | 2001-10-29 | 2001-11-02 | 1d | start no earlier than 2001-10-29 | 蒋建军; 陈坚; 江旻 | 120h |
| 27 | 22 | Management | 5d | 2001-10-29 | 2001-11-02 | 1d | start no earlier than 2001-10-29 |  |  |
| 28 | 23 | Product Acception Plan | 5d | 2001-10-29 | 2001-11-02 | 1d | start no earlier than 2001-10-29 | 林旭东 | 40h |
| 29 | 24 | Project Risk List (update) | 5d | 2001-10-29 | 2001-11-02 | 1d | start no earlier than 2001-10-29 | 林旭东 | 40h |
| 31 | 25 | Configuration and Management | 5d | 2001-10-29 | 2001-11-02 | 1d | start no earlier than 2001-10-29 |  |  |
| 32 | 26 | Change and Deliver Configuration Items | 5d | 2001-10-29 | 2001-11-02 | 1d | start no earlier than 2001-10-29 | 汪林涛 | 40h |
| 33 | 27 | Manage Baselines and Releases | 5d | 2001-10-29 | 2001-11-02 | 1d | start no earlier than 2001-10-29 | 汪林涛 | 40h |
| 34 | 28 | Manage Change Requests | 5d | 2001-10-29 | 2001-11-02 | 1d | start no earlier than 2001-10-29 | 汪林涛 | 40h |
| 35 | 29 | Parallel Development Enviroment Build | 5d | 2001-10-29 | 2001-11-02 | 1d | start no earlier than 2001-10-29 | 汪林涛 | 40h |
| 37 | 30 | Deployment | 5d | 2001-10-29 | 2001-11-02 | 1d | start no earlier than 2001-10-29 |  |  |
| 38 | 31 | Review Material List | 1d | 2001-11-02 | 2001-11-02 | 1d | start no earlier than 2001-11-02 | 方银; 黄煜 | 16h |
| 39 | 32 | Design Product Graphic | 5d | 2001-10-29 | 2001-11-02 | 1d | start no earlier than 2001-10-29 | 赵宜 | 40h |
| 40 | 33 | Review Deployment Plan | 2d | 2001-11-01 | 2001-11-02 | 1d | start no earlier than 2001-11-01 | 黄煜 | 16h |
| 42 | 34 | Other | 5d | 2001-10-29 | 2001-11-02 | 1d | start no earlier than 2001-10-29 |  |  |
| 43 | 35 | Assessment Prepare (Unit Test Case) | 1d | 2001-10-27 | 2001-10-27 | 6d | start no earlier than 2001-10-27 | 蒋建军 | 8h |
| 44 | 36 | Assessment Prepare (Integration Test Case) | 1d | 2001-11-01 | 2001-11-01 | 2d | start no earlier than 2001-11-01 | 李锐; 黄煜; 林旭东 | 24h |
| 45 | 37 | Assessment Prepare(System Test Case) | 1d? | 2001-11-02 | 2001-11-02 | 1d | start no earlier than 2001-11-02 | 李锐; 黄煜; 林旭东 | 24h |
| 47 | 38 | Training | 5d | 2001-10-29 | 2001-11-02 | 1d | start no earlier than 2001-10-29 |  |  |
| 48 | 39 | Training(RUP) | 5d | 2001-10-29 | 2001-11-02 | 1d | start no earlier than 2001-10-29 | 姜磊 | 40h |
| 49 | 40 | Training(RUP) | 5d | 2001-10-29 | 2001-11-02 | 1d | start no earlier than 2001-10-29 | 肖军 | 40h |
| 50 | 41 | Training(RUP) | 5d | 2001-10-29 | 2001-11-02 | 1d | start no earlier than 2001-10-29 | 伍虹屹 | 40h |
| 51 | 42 | Training(RUP) | 5d | 2001-10-29 | 2001-11-02 | 1d | start no earlier than 2001-10-29 | 罗斌 | 40h |
| 52 | 43 | Training(RUP) | 5d | 2001-10-29 | 2001-11-02 | 1d | start no earlier than 2001-10-29 | 张际海 | 40h |
| 53 | 44 | Training(RUP) | 5d | 2001-10-29 | 2001-11-02 | 1d | start no earlier than 2001-10-29 | 陈建 | 40h |
| 54 | 45 | Training(RUP) | 5d | 2001-10-29 | 2001-11-02 | 1d | start no earlier than 2001-10-29 | 钱灿 | 40h |
| 55 | 46 | Training(RUP) | 5d | 2001-10-29 | 2001-11-02 | 1d | start no earlier than 2001-10-29 | 林旭东 | 40h |
| 56 | 47 | Training(RUP) | 5d | 2001-10-29 | 2001-11-02 | 1d | start no earlier than 2001-10-29 | 李锐 | 40h |
| 57 | 48 | Training(RUP) | 5d | 2001-10-29 | 2001-11-02 | 1d | start no earlier than 2001-10-29 | 胡建军 | 40h |
| 58 | 49 | Training(RUP) | 5d | 2001-10-29 | 2001-11-02 | 1d | start no earlier than 2001-10-29 | 汪道明 | 40h |
| 59 | 50 | Training(RUP) | 5d | 2001-10-29 | 2001-11-02 | 1d | start no earlier than 2001-10-29 | 黄煜 | 40h |
| 60 | 51 | Training(RUP) | 5d | 2001-10-29 | 2001-11-02 | 1d | start no earlier than 2001-10-29 | 蒋建军 | 40h |
| 61 | 52 | Training(RUP) | 5d | 2001-10-29 | 2001-11-02 | 1d | start no earlier than 2001-10-29 | 陈坚 | 40h |
| 62 | 53 | Training(RUP) | 5d | 2001-10-29 | 2001-11-02 | 1d | start no earlier than 2001-10-29 | 江旻 | 40h |
| 63 | 54 | Training(RUP) | 5d | 2001-10-29 | 2001-11-02 | 1d | start no earlier than 2001-10-29 | 方银 | 40h |
| 64 | 55 | Training(RUP) | 5d | 2001-10-29 | 2001-11-02 | 1d | start no earlier than 2001-10-29 | 汪林涛 | 40h |
| 65 | 56 | Training(RUP) | 5d | 2001-10-29 | 2001-11-02 | 1d | start no earlier than 2001-10-29 | 赵宜 | 40h |
| 68 | 57 | Project Team Weekly Meeting | 1d | 2001-11-03 | 2001-11-03 | 0d | start no earlier than 2001-11-03 | 林旭东 | 8h |
| 69 | 58 | Project Team Weekly Meeting | 1d | 2001-11-03 | 2001-11-03 | 0d | start no earlier than 2001-11-03 | 李锐 | 8h |
| 70 | 59 | Project Team Weekly Meeting | 1d | 2001-11-03 | 2001-11-03 | 0d | start no earlier than 2001-11-03 | 胡建军 | 8h |
| 71 | 60 | Project Team Weekly Meeting | 1d | 2001-11-03 | 2001-11-03 | 0d | start no earlier than 2001-11-03 | 汪道明 | 8h |
| 72 | 61 | Project Team Weekly Meeting | 1d | 2001-11-03 | 2001-11-03 | 0d | start no earlier than 2001-11-03 | 黄煜 | 8h |
| 73 | 62 | Project Team Weekly Meeting | 1d | 2001-11-03 | 2001-11-03 | 0d | start no earlier than 2001-11-03 | 姜磊 | 8h |
| 74 | 63 | Project Team Weekly Meeting | 1d | 2001-11-03 | 2001-11-03 | 0d | start no earlier than 2001-11-03 | 陈建 | 8h |
| 75 | 64 | Project Team Weekly Meeting | 1d | 2001-11-03 | 2001-11-03 | 0d | start no earlier than 2001-11-03 | 罗斌 | 8h |
| 76 | 65 | Project Team Weekly Meeting | 1d | 2001-11-03 | 2001-11-03 | 0d | start no earlier than 2001-11-03 | 伍虹屹 | 8h |
| 77 | 66 | Project Team Weekly Meeting | 1d | 2001-11-03 | 2001-11-03 | 0d | start no earlier than 2001-11-03 | 钱灿 | 8h |
| 78 | 67 | Project Team Weekly Meeting | 1d | 2001-11-03 | 2001-11-03 | 0d | start no earlier than 2001-11-03 | 肖军 | 8h |
| 79 | 68 | Project Team Weekly Meeting | 1d | 2001-11-03 | 2001-11-03 | 0d | start no earlier than 2001-11-03 | 蒋建军 | 8h |
| 80 | 69 | Project Team Weekly Meeting | 1d | 2001-11-03 | 2001-11-03 | 0d | start no earlier than 2001-11-03 | 陈坚 | 8h |
| 81 | 70 | Project Team Weekly Meeting | 1d | 2001-11-03 | 2001-11-03 | 0d | start no earlier than 2001-11-03 | 江旻 | 8h |

| ID | WBS | Task | Duration | Start | Finish | Total slack | Constraint | Resources | Work |
| --- | --- | --- | --- | --- | --- | --- | --- | --- | --- |
| 82 | 71 | Project Team Weekly Meeting | 1d | 2001-11-03 | 2001-11-03 | 0d | start no earlier than 2001-11-03 | 方银 | 8h |
| 83 | 72 | Project Team Weekly Meeting | 1d | 2001-11-03 | 2001-11-03 | 0d | start no earlier than 2001-11-03 | 张际海 | 8h |
| 84 | 73 | Project Team Weekly Meeting | 1d | 2001-11-03 | 2001-11-03 | 0d | start no earlier than 2001-11-03 | 汪林涛 | 8h |
| 85 | 74 | Project Team Weekly Meeting | 1d | 2001-11-03 | 2001-11-03 | 0d | start no earlier than 2001-11-03 | 赵宜 | 8h |
